# ProjectPlan

How a schedule from MS Project changed from version to version. A marks actual dates.

## Version 1 (saved 2012-09-06)

Note of the change: Initial Import

| ID | Task | Duration | Start | Finish | Predecessors |
| --- | --- | --- | --- | --- | --- |
| 1 | Brainstorming | 2d | 2012-08-22 | 2012-08-23 |  |
| 2 | Preliminary Schematic | 6d | 2012-08-22 | 2012-08-29 |  |
| 3 | Bill of Materials | 7d | 2012-08-22 | 2012-08-30 |  |
| 4 | Order Parts | 2d | 2012-08-30 | 2012-08-31 |  |
| 5 | Breadboard Proof of Concept | 5d | 2012-08-31 | 2012-09-06 |  |
| 6 | Project Plan | 0d | 2012-09-20 | 2012-09-20 | 7, 8, 9 |
| 7 | Project Plan Document | 3d | 2012-09-12 | 2012-09-14 |  |
| 8 | Project Plan Presentation | 4d | 2012-09-14 | 2012-09-19 |  |
| 9 | Gant Chart | 1d | 2012-09-06 | 2012-09-06 |  |
| 10 | PCB Layout | 1d | 2012-10-04 | 2012-10-04 | 11, 12, 13 |
| 11 | Create PCB Packages | 12d | 2012-09-06 | 2012-09-21 |  |
| 12 | Place Parts on PCB | 5d | 2012-09-21 | 2012-09-27 |  |
| 13 | Route Parts on PCB | 5d | 2012-09-27 | 2012-10-03 |  |
| 14 | Order PCBs | 1d | 2012-10-03 | 2012-10-03 |  |

## Version 2 (saved 2012-09-10)

Note of the change: Add more detail to the project plan

Last finish 2012-10-04 → 2012-12-06 (+63d). Complete tasks 0 → 6.

Added:

| ID | Task | Duration | Start | Finish | Predecessors | Constraint |
| --- | --- | --- | --- | --- | --- | --- |
| 6 | Develop Product Specification | 6d | 2012-09-06 | 2012-09-13 | 3 | finish no earlier than 2012-09-13 |
| 14 | Develop Firmware | 12w | 2012-08-31 A | 2012-11-22 | 2 |  |
| 15 | Make Radio Interface Cables | 2d | 2012-09-03 | 2012-09-04 | 4 |  |
| 16 | Populate PCB | 3d | 2012-11-02 | 2012-11-06 | 13 |  |
| 17 | Test and Debug Hardware/Firmware | 10d | 2012-11-07 | 2012-11-20 | 16 |  |
| 18 | Order Enclosure - Wait for Arrival | 2w | 2012-11-02 | 2012-11-15 | 13 |  |
| 19 | Assemble Enclosure | 1w | 2012-11-16 | 2012-11-22 | 18 |  |
| 20 | Write Report | 2w | 2012-11-23 | 2012-12-06 | 17, 19 |  |

Removed: 6 Project Plan; 10 PCB Layout

Changed:

| ID | Task | Start | Finish | Duration | Complete | Total float | Predecessors | Other |
| --- | --- | --- | --- | --- | --- | --- | --- | --- |
| 1 | Brainstorming | 2012-08-22 A | 2012-08-23 A |  | 0% → 100% |  |  |  |
| 2 | Preliminary Schematic | 2012-08-22 A | 2012-08-29 A |  | 0% → 100% |  | none → 1 |  |
| 3 | Bill of Materials | 2012-08-22 A | 2012-08-30 A |  | 0% → 100% |  | none → 2 |  |
| 4 | Order Parts | 2012-08-30 A | 2012-08-31 A |  | 0% → 100% |  | none → 3 |  |
| 5 | Breadboard Proof of Concept | 2012-08-31 A | 2012-09-06 → 2012-09-13 (+7d) | 5d → 10d | 0% → 38% | none → 50d | none → 4, 2 |  |
| 7 | Gant Chart | 2012-09-06 A | 2012-09-06 → 2012-09-12 A (+6d) | 1d → 5d | 0% → 100% |  |  |  |
| 8 | Project Plan Document | 2012-09-12 → 2012-09-13 (+1d) | 2012-09-14 → 2012-09-17 (+3d) |  |  | none → 44d | none → 7 |  |
| 9 | Project Plan Presentation | 2012-09-14 → 2012-09-18 (+4d) | 2012-09-19 → 2012-09-21 (+2d) |  |  | none → 44d | none → 8 |  |
| 10 | Create PCB Packages | 2012-09-06 A |  |  | 0% → 75% | none → 25d | none → 3 |  |
| 11 | Place Parts on PCB | 2012-09-21 A | 2012-09-27 A |  | 0% → 100% |  | none → 2 |  |
| 12 | Route Parts on PCB | 2012-09-27 → 2012-09-28 (+1d) | 2012-10-03 → 2012-10-04 (+1d) |  |  | none → 0d | none → 11 |  |
| 13 | Order PCBs - Wait for Arrival | 2012-10-03 → 2012-10-05 (+2d) | 2012-10-03 → 2012-11-01 (+29d) | 1d → 4w |  | none → 0d | none → 10, 11, 12 | was named Order PCBs |

## Version 3 (saved 2012-09-13)

Note of the change: More planning and progress updates

Last finish stays 2012-12-06. Complete tasks 6 → 9.

Changed:

| ID | Task | Start | Finish | Duration | Complete | Total float | Other |
| --- | --- | --- | --- | --- | --- | --- | --- |
| 5 | Breadboard Proof of Concept |  | 2012-09-13 A |  | 38% → 100% | 50d → none |  |
| 6 | Develop Product Specification | 2012-09-06 → 2012-09-10 A (+4d) | 2012-09-13 A | 6d → 4d | 0% → 100% | 50d → none |  |
| 8 | Project Proposal |  |  |  |  |  | was named Project Plan Document |
| 10 | Create PCB Packages |  | 2012-09-21 → 2012-09-12 A (-9d) | 12d → 5d | 75% → 100% | 25d → none |  |
| 14 | Develop Firmware |  |  |  | 11% → 32% |  |  |

## Version 4 (saved 2012-09-20)

Note of the change: Getting stuff done.

Last finish 2012-12-06 → 2012-12-07 (+1d). Complete tasks 9 → 10.

Added:

| ID | Task | Duration | Start | Finish |
| --- | --- | --- | --- | --- |
| 21 | Test/Debug/Improve/Fix | 11d | 2012-11-23 | 2012-12-07 |

Changed:

| ID | Task | Start | Finish | Duration | Complete | Total float | Predecessors | Other |
| --- | --- | --- | --- | --- | --- | --- | --- | --- |
| 8 | Project Proposal | 2012-09-13 A | 2012-09-17 → 2012-09-26 (+9d) | 3d → 2w | 0% → 25% | 44d → 37d |  |  |
| 9 | Project Plan Presentation | 2012-09-18 → 2012-09-27 (+9d) | 2012-09-21 → 2012-10-02 (+11d) |  |  | 44d → 48d |  | constraint none → start no earlier than 2012-09-27 |
| 11 | Place Parts on PCB | 2012-09-21 A → 2012-09-13 A (-8d) | 2012-09-27 A → 2012-09-19 A (-8d) |  |  |  |  |  |
| 12 | Route Parts on PCB | 2012-09-28 → 2012-09-19 A (-9d) | 2012-10-04 → 2012-09-19 A (-15d) | 5d → 1d | 0% → 100% | 0d → none |  | constraint none → start no earlier than 2012-09-19 |
| 13 | Order PCBs - Wait for Arrival | 2012-10-05 → 2012-09-20 A (-15d) | 2012-11-01 → 2012-10-17 (-15d) |  | 0% → 75% | 0d → 11d |  |  |
| 14 | Develop Firmware |  |  |  | 32% → 40% | 10d → 11d |  |  |
| 16 | Populate PCB | 2012-11-02 → 2012-10-18 (-15d) | 2012-11-06 → 2012-10-22 (-15d) |  |  | 2d → 11d |  |  |
| 17 | Test and Debug Hardware/Firmware | 2012-11-07 → 2012-10-23 (-15d) | 2012-11-20 → 2012-11-05 (-15d) |  |  | 2d → 11d |  |  |
| 18 | Shop for Enclosures in Ottawa | 2012-11-02 → 2012-09-21 (-42d) | 2012-11-15 → 2012-09-21 (-55d) | 2w → 1d |  | 0d → 37d | 13 → 11 | was named Order Enclosure - Wait for Arrival; constraint none → start no earlier than 2012-09-21 |
| 19 | Assemble Enclosure | 2012-11-16 → 2012-10-18 (-29d) | 2012-11-22 → 2012-10-24 (-29d) |  |  | 0d → 19d | 18 → 18, 13 |  |
| 20 | Write Report | 2012-11-23 → 2012-11-06 (-17d) | 2012-12-06 → 2012-11-22 (-14d) | 2w → 13d |  | 0d → 11d |  |  |

## Version 5 (saved 2012-10-03)

Note of the change: Update project timeline

Last finish stays 2012-12-07. Complete tasks 10 → 11.

Changed:

| ID | Task | Start | Finish | Duration | Complete | Total float | Predecessors | Other |
| --- | --- | --- | --- | --- | --- | --- | --- | --- |
| 8 | Project Proposal |  | 2012-09-26 → 2012-10-03 (+7d) | 2w → 3w | 25% → 85% | 37d → 43d |  | constraint none → finish no earlier than 2012-10-03 |
| 9 | Project Plan Presentation | 2012-09-27 → 2012-10-04 (+7d) | 2012-10-02 → 2012-10-09 (+7d) |  |  | 48d → 43d |  |  |
| 13 | Order PCBs - Wait for Arrival |  |  |  | 75% → 90% |  |  |  |
| 15 | Make Radio Interface Cables | 2012-09-03 → 2012-09-27 A (+24d) | 2012-09-04 → 2012-10-04 (+30d) | 2d → 6d | 0% → 10% | 57d → 46d | 4 → none | constraint none → finish no earlier than 2012-10-04 |
| 18 | Shop for Enclosures in Ottawa | 2012-09-21 A | 2012-09-21 A |  | 0% → 100% | 37d → none |  |  |

## Version 6 (saved 2012-10-16)

Note of the change: Project Updates

Last finish stays 2012-12-07. Complete tasks 11 → 15.

Added:

| ID | Task | Duration | Start | Finish | Predecessors |
| --- | --- | --- | --- | --- | --- |
| 18 | Schematic - Rev B | 5d | 2012-10-10 A | 2012-10-16 A |  |
| 19 | Layout - Rev B | 5d | 2012-10-10 A | 2012-10-16 A |  |
| 20 | Bill of Materials - Rev B | 1d | 2012-10-16 A | 2012-10-16 A | 18 |
| 21 | Order Parts - Rev B | 2d | 2012-10-18 | 2012-10-19 | 20 |
| 22 | Order PCBs & Wait for Arrival - Rev B | 11d | 2012-10-18 | 2012-11-01 | 19 |
| 23 | Populate Boards - Rev B | 3d | 2012-11-02 | 2012-11-06 | 21, 22 |

Removed: 17 Test and Debug Hardware/Firmware

Changed:

| ID | Task | Start | Finish | Duration | Complete | Total float | Predecessors | Other |
| --- | --- | --- | --- | --- | --- | --- | --- | --- |
| 8 | Project Proposal |  | 2012-10-03 → 2012-10-16 (+13d) | 3w → 4.8w | 85% → 95% | 43d → none |  |  |
| 9 | Project Plan Presentation | 2012-10-04 → 2012-10-17 (+13d) | 2012-10-09 → 2012-10-18 (+9d) | 4d → 2d |  | 43d → none |  | constraint start no earlier than 2012-09-27 → start no earlier than 2012-10-17 |
| 13 | Order PCBs - Wait for Arrival |  | 2012-10-17 → 2012-10-10 A (-7d) | 4w → 3w | 90% → 100% | 11d → none |  |  |
| 14 | Develop Firmware |  |  |  | 40% → 55% | 11d → none |  |  |
| 15 | Make Radio Interface Cables |  | 2012-10-04 → 2012-10-22 (+18d) | 6d → 18d | 10% → 3% | 46d → none |  |  |
| 16 | Populate PCB | 2012-10-18 → 2012-10-10 A (-8d) | 2012-10-22 → 2012-10-15 (-7d) | 3d → 4d | 0% → 50% | 11d → none |  |  |
| 17 | Buy Enclosures |  |  |  |  |  |  | was named Shop for Enclosures in Ottawa |
| 24 | Assemble Enclosure | 2012-10-18 → 2012-11-07 (+20d) | 2012-10-24 → 2012-11-13 (+20d) |  |  | 19d → none | 17, 13 → 17, 23 |  |
| 25 | Write Report | 2012-11-06 → 2012-11-14 (+8d) | 2012-11-22 → 2012-11-30 (+8d) |  |  | 11d → none | Test and Debug Hardware/Firmware, 24 → 24 |  |

## Version 7 (saved 2012-12-05)

Note of the change: Update project documents for the end of the semester

Last finish stays 2012-12-07. Complete tasks 15 → 26.

Changed:

| ID | Task | Start | Finish | Complete |
| --- | --- | --- | --- | --- |
| 8 | Project Proposal |  | 2012-10-16 A | 95% → 100% |
| 9 | Project Plan Presentation | 2012-10-17 A | 2012-10-18 A | 0% → 100% |
| 14 | Develop Firmware |  | 2012-11-22 A | 55% → 100% |
| 15 | Make Radio Interface Cables |  | 2012-10-22 A | 3% → 100% |
| 16 | Populate PCB |  | 2012-10-15 A | 50% → 100% |
| 21 | Order Parts - Rev B | 2012-10-18 A | 2012-10-19 A | 0% → 100% |
| 22 | Order PCBs & Wait for Arrival - Rev B | 2012-10-18 A | 2012-11-01 A | 0% → 100% |
| 23 | Populate Boards - Rev B | 2012-11-02 A | 2012-11-06 A | 0% → 100% |
| 24 | Assemble Enclosure | 2012-11-07 A | 2012-11-13 A | 0% → 100% |
| 25 | Write Report | 2012-11-14 A | 2012-11-30 A | 0% → 100% |
| 26 | Test/Debug/Improve/Fix | 2012-11-23 A | 2012-12-07 A | 0% → 100% |

## Version 8 (saved 2013-01-21)

Note of the change: Add milestones for this semester to the project plan

Last finish 2012-12-07 → 2013-04-30 (+144d). Complete tasks 26 → 27.

Added:

| ID | Task | Duration | Start | Finish |
| --- | --- | --- | --- | --- |
| 27 | Gant Chart Updates | 7d | 2013-01-21 A | 2013-01-29 A |
| 28 | Firmware | 22d | 2013-01-21 | 2013-02-19 |
| 29 | Software | 26d | 2013-02-19 | 2013-03-26 |
| 30 | Presentation | 16d | 2013-03-26 | 2013-04-16 |
| 31 | Technical Document | 26d | 2013-03-26 | 2013-04-30 |
